# OJL

How a schedule from MS Project changed from version to version. A marks actual dates.

## Version 1 (saved 2009-01-22)

Note of the change: スケジュールを移動

| ID | WBS | Task | Duration | Start | Finish | Predecessors | Total float | Constraint |
| --- | --- | --- | --- | --- | --- | --- | --- | --- |
| 1 | 1 | **TLV phase3** | 107d? | 2008-10-06 | 2009-03-03 |  | 0d |  |
| 2 | 1.1 | **勉強** | 32d? | 2008-10-06 | 2008-11-18 |  | 30d |  |
| 3 |  | 組込みシステムの勉強 | 16d? | 2008-10-06 | 2008-10-27 |  | 38d | finish no earlier than 2008-10-27 |
| 4 |  | C#の勉強 | 16d? | 2008-10-28 | 2008-11-18 |  | 22d | finish no earlier than 2008-11-18 |
| 5 |  | TLVの勉強 | 16d? | 2008-10-28 | 2008-11-18 |  | 22d | finish no earlier than 2008-11-18 |
| 6 | 1.2 | **単体テスト** | 45d? | 2008-11-19 | 2009-01-20 | 2 | 30d |  |
| 7 |  | リストアップ | 4d? | 2008-11-19 | 2008-11-24 |  | 28d | finish no earlier than 2008-11-24 |
| 8 |  | 実施 | 41d? | 2008-11-25 | 2009-01-20 | 7 | 30d | start no earlier than 2008-11-25 |
| 9 | 1.3 | **システムテスト** | 46d? | 2008-11-26 | 2009-01-28 | 2 | 24d |  |
| 10 |  | 設計 | 4d? | 2008-11-26 | 2008-12-01 |  | 60d | finish no earlier than 2008-12-01 |
| 11 |  | 実施 | 6d? | 2009-01-21 | 2009-01-28 | 10 | 24d | finish no earlier than 2009-01-28 |
| 12 | 1.4 | **CPU利用率の表示検討** | 15d | 2009-01-28 | 2009-02-17 |  | 0d |  |
| 13 |  | 要求理解 | 5d | 2009-01-28 | 2009-02-03 |  | 0d | finish no earlier than 2009-02-03 |
| 14 |  | ペーパープロトタイピング | 5d | 2009-02-04 | 2009-02-10 | 13 | 0d |  |
| 15 |  | 仕様書を作る | 5d | 2009-02-11 | 2009-02-17 | 14 | 0d |  |
| 16 | 1.5 | **CPUごとのタスク表示** | 25d | 2009-01-28 | 2009-03-03 |  | 0d |  |
| 17 |  | 変換ルールの理解 | 5d | 2009-01-28 | 2009-02-03 |  | 0d | start no earlier than 2009-01-28 |
| 18 |  | リソースファイルの理解 | 5d | 2009-01-28 | 2009-02-03 |  | 0d | start no earlier than 2009-01-28 |
| 19 |  | 変換ルールの記述 | 10d | 2009-02-04 | 2009-02-17 | 17, 18 | 0d |  |
| 20 | 1.5.4 | **表示のテスト** | 20d | 2009-02-04 | 2009-03-03 |  | 0d |  |
| 21 |  | テスト設計 | 5d | 2009-02-04 | 2009-02-10 | 17, 18 | 5d | start no earlier than 2009-01-28 |
| 22 |  | 実施 | 5d | 2009-02-18 | 2009-02-24 | 21, 19 | 0d |  |
| 23 |  | 修正 | 5d | 2009-02-25 | 2009-03-03 | 22 | 0d |  |
| 24 | 1.6 | **中間報告** | 9d | 2009-02-18 | 2009-03-02 | 12, 19 | 0d |  |
| 25 |  | 資料作成 | 5d | 2009-02-18 | 2009-02-24 |  | 0d |  |
| 26 |  | 発表練習 | 4d | 2009-02-25 | 2009-03-02 | 25 | 0d | finish no earlier than 2009-03-02 |

## Version 2 (saved 2009-01-29)

Note of the change: でにーず

Last finish 2009-03-03 → 2009-03-23 (+20d). Complete tasks 0 → 1.

Added:

| ID | Task | Duration | Start | Finish | Predecessors | Constraint | Resources |
| --- | --- | --- | --- | --- | --- | --- | --- |
| 14 | スクリプト言語の仕様書を作る | 5d | 2009-02-11 | 2009-02-17 | 13 |  | mizuno |
| 16 | スライド作成 | 4d | 2009-02-05 | 2009-02-10 |  |  | yanagi |
| 17 | 外部仕様書作成 | 4d | 2009-02-05 | 2009-02-10 |  | must start on 2009-02-05 | yanagi |
| 28 | 発表 | 1d | 2009-03-02 | 2009-03-02 | 27 | must finish on 2009-03-02 |  |
| 29 | 修論中間発表 | 1d | 2009-02-04 | 2009-02-04 |  | must finish on 2009-02-04 |  |
| 30 | TOPPERS技術検討会＠東京 | 1d | 2009-02-26 | 2009-02-26 |  | must start on 2009-02-26 |  |

Removed: 13 要求理解; 14 ペーパープロトタイピング

Changed:

| ID | Task | Start | Finish | Duration | Complete | Total float | Predecessors | Other |
| --- | --- | --- | --- | --- | --- | --- | --- | --- |
| 1 | **TLV phase3** | 2008-10-06 A | 2009-03-03 → 2009-03-23 (+20d) | 107d? → 121d? | 0% → 10% |  |  |  |
| 2 | **勉強** | 2008-10-06 A |  |  | 0% → 33% | 30d → 44d |  |  |
| 3 | 組込みシステムの勉強 | 2008-10-06 A | 2008-10-27 A |  | 0% → 100% | 38d → none |  |  |
| 12 | **CPU利用率の表示検討** | 2009-01-28 → 2009-02-05 (+8d) |  | 15d → 9d |  |  | none → 29 | constraint none → start no earlier than 2009-02-04 |
| 13 | 要求仕様書を作る | 2009-02-11 → 2009-02-05 (-6d) | 2009-02-17 → 2009-02-10 (-7d) | 5d → 4d |  |  | ペーパープロトタイピング → none | was named 仕様書を作る; resources none → mizuno |
| 15 | **CPUごとのタスク表示** | 2009-01-28 → 2009-02-05 (+8d) | 2009-03-03 → 2009-03-23 (+20d) | 25d → 33d |  |  | none → 29 |  |
| 18 | 変換ルールの理解 | 2009-01-28 → 2009-02-11 (+14d) | 2009-02-03 → 2009-02-17 (+14d) |  |  | 0d → 9d | none → 17 | constraint start no earlier than 2009-01-28 → start no earlier than 2009-02-03; resources none → yanagi |
| 19 | リソースファイルの理解 | 2009-01-28 → 2009-02-11 (+14d) | 2009-02-03 → 2009-02-17 (+14d) |  |  | 0d → 9d | none → 17 | resources none → yanagi |
| 20 | 変換ルールの記述 | 2009-02-04 → 2009-02-11 (+7d) |  | 10d → 5d |  | 0d → 1d | 18, 19 → 16, 17 | resources none → yanagi |
| 21 | **表示のテスト** | 2009-02-04 → 2009-03-03 (+27d) | 2009-03-03 → 2009-03-23 (+20d) | 20d → 15d |  |  |  |  |
| 22 | テスト設計 | 2009-02-04 → 2009-03-03 (+27d) | 2009-02-10 → 2009-03-09 (+27d) |  |  | 5d → 0d | 18, 19 → 18, 19, 17, 28 |  |
| 23 | 実施 | 2009-02-18 → 2009-03-10 (+20d) | 2009-02-24 → 2009-03-16 (+20d) |  |  |  |  |  |
| 24 | 修正 | 2009-02-25 → 2009-03-17 (+20d) | 2009-03-03 → 2009-03-23 (+20d) |  |  |  |  |  |
| 25 | **中間報告** |  |  |  |  |  | 12, 20 → 20, 14 |  |
| 26 | 資料作成 |  | 2009-02-24 → 2009-02-23 (-1d) | 5d → 4d |  | 0d → 1d |  |  |
| 27 | 発表練習 | 2009-02-25 → 2009-02-24 (-1d) | 2009-03-02 → 2009-02-26 (-4d) | 4d → 3d |  | 0d → 1d |  | constraint finish no earlier than 2009-03-02 → start no earlier than 2009-02-24 |

## Version 3 (saved 2009-02-18)

Note of the change: スケジュールの修正と進捗率の記入

Last finish stays 2009-03-23. Complete tasks 1 → 13.

Changed:

| ID | Task | Start | Finish | Duration | Complete | Total float | Predecessors | Other |
| --- | --- | --- | --- | --- | --- | --- | --- | --- |
| 1 | **TLV phase3** |  |  | 121d? → 121d | 10% → 72% |  |  |  |
| 2 | **勉強** |  | 2008-11-18 A | 32d? → 32d | 33% → 100% | 44d → none |  |  |
| 3 | 組込みシステムの勉強 |  |  | 16d? → 16d |  |  |  |  |
| 4 | C#の勉強 | 2008-10-28 A | 2008-11-18 A | 16d? → 16d | 0% → 100% | 22d → none |  |  |
| 5 | TLVの勉強 | 2008-10-28 A | 2008-11-18 A | 16d? → 16d | 0% → 100% | 22d → none |  |  |
| 6 | **単体テスト** | 2008-11-19 A |  | 45d? → 45d | 0% → 54% |  |  |  |
| 7 | リストアップ | 2008-11-19 A | 2008-11-24 A | 4d? → 4d | 0% → 100% | 36d → none |  |  |
| 8 | 実施 | 2008-11-25 A |  | 41d? → 41d | 0% → 50% |  |  |  |
| 9 | **システムテスト** | 2008-11-26 A |  | 46d? → 46d | 0% → 40% |  |  |  |
| 10 | 設計 | 2008-11-26 A | 2008-12-01 A | 4d? → 4d | 0% → 100% | 74d → none |  |  |
| 11 | 実施 |  |  | 6d? → 6d |  |  |  |  |
| 12 | **CPU利用率の表示検討** | 2009-02-05 A |  |  | 0% → 72% | 0d → 4.5d |  |  |
| 13 | 要求仕様書作成 | 2009-02-05 A | 2009-02-10 A |  | 0% → 100% | 0d → none |  | was named 要求仕様書を作る |
| 14 | スクリプト言語の仕様書作成 | 2009-02-11 A |  |  | 0% → 50% | 1d → 4.5d |  | was named スクリプト言語の仕様書を作る |
| 15 | **CPUごとのタスク表示** | 2009-02-05 A |  |  | 0% → 65% |  |  |  |
| 16 | スライド作成 | 2009-02-05 A | 2009-02-10 A |  | 0% → 100% | 0d → none |  |  |
| 17 | 外部仕様書作成 | 2009-02-05 A | 2009-02-10 A |  | 0% → 100% | 0d → none |  |  |
| 18 | 変換ルールの理解 | 2009-02-11 A | 2009-02-17 A |  | 0% → 100% | 9d → none |  |  |
| 19 | リソースファイルの理解 | 2009-02-11 A | 2009-02-17 A |  | 0% → 100% | 9d → none |  |  |
| 20 | 変換ルールの記述 | 2009-02-11 A | 2009-02-17 → 2009-02-24 A (+7d) | 5d → 10d | 0% → 100% | 1d → none |  |  |
| 25 | **中間報告** | 2009-02-18 A |  |  | 0% → 88% |  | 20, 14 → 14, 17 |  |
| 26 | 資料作成 | 2009-02-18 A | 2009-02-23 A |  | 0% → 100% | 1d → none |  |  |
| 27 | 発表練習 | 2009-02-24 A | 2009-02-26 A |  | 0% → 100% | 1d → none |  |  |
